# lab01

How a schedule from MS Project changed from version to version. A marks actual dates.

## Version 1 (data date 2021-05-05, saved 2021-04-02, file lab05.mpp)

Note of the change: lab 1-6

| ID | WBS | Task | Duration | Start | Finish | Predecessors | Complete | Total float | Constraint |
| --- | --- | --- | --- | --- | --- | --- | --- | --- | --- |
| 1 |  | Начало проекта | 0w | 2021-03-01 09:00 A | 2021-03-01 09:00 A |  | 100% |  |  |
| 2 | 2 | **Создание интерфейса** | 87.08d | 2021-03-01 09:00 A | 2021-07-06 11:37 | 1 | 85% | 4.05d |  |
| 3 | 2.1 | **Разработка дизайна интерфейса** | 28.25d | 2021-03-01 09:00 A | 2021-04-09 11:00 A |  | 100% |  |  |
| 4 |  | Разработка 2D графических элементов | 3.3w | 2021-03-01 09:00 A | 2021-03-24 18:00 A |  | 100% |  |  |
| 5 |  | Разработка 3D графических элементов | 2.2w | 2021-03-01 09:00 A | 2021-03-17 12:00 A | 4SS | 100% |  |  |
| 6 |  | Создание заставки | 3.3w | 2021-03-17 13:00 A | 2021-04-09 11:00 A | 5 | 100% |  |  |
| 7 |  | Программирование интерфейса | 1.5w | 2021-06-24 16:37 | 2021-07-06 11:37 | 3, 12 |  | 4.05d |  |
| 8 | 3 | **Построение базы объектов** | 99.25d | 2021-03-23 13:00 A | 2021-08-12 17:00 |  | 30% | 8.38d |  |
| 9 |  | Анализ и построение структуры базы объектов | 2w | 2021-03-23 13:00 A | 2021-04-06 15:00 A |  | 100% |  |  |
| 10 |  | Программирование средств обработки базы объектов | 4.9w | 2021-04-06 15:00 A | 2021-05-07 18:00 | 9 | 93% | 8.38d |  |
| 11 |  | Наполнение базы объектов | 15w | 2021-05-07 18:00 | 2021-08-12 17:00 | 10 |  | 8.38d |  |
| 12 | 4 | **Создание ядра GIS** | 79.58d | 2021-03-01 09:00 A | 2021-06-24 16:37 |  | 57% | 4.05d |  |
| 13 |  | Анализ и проектирование ядра | 3w | 2021-03-01 09:00 A | 2021-03-23 12:00 A |  | 100% |  |  |
| 14 |  | Создание модели ядра | 6.45w | 2021-03-23 13:00 A | 2021-05-07 18:00 | 13 | 94% | 4.05d |  |
| 15 |  | Тестирование модели ядра | 0.25w | 2021-05-11 09:00 | 2021-05-12 11:00 | 14 |  | 4.05d | start no earlier than 2021-05-11 09:00 |
| 16 |  | Создание рабочей версии ядра | 6.09w | 2021-05-12 11:00 | 2021-06-24 16:37 | 15 |  | 4.05d |  |
| 17 |  | Создание мультимедиа – наполнения | 6w | 2021-04-09 11:00 A | 2021-05-26 10:00 | 3 | 57% | 64d |  |
| 18 |  | Создание справочной системы | 2w | 2021-07-15 15:37 | 2021-07-29 17:37 | 7 |  | 18.3d |  |
| 19 | 7 | **Создание руководства пользователя** | 17.38d | 2021-06-22 11:37 | 2021-07-15 15:37 | 7FS-10d |  | 4.05d |  |
| 20 |  | Разработка дизайна руководства | 1w | 2021-06-22 11:37 | 2021-06-29 13:37 |  |  | 4.05d |  |
| 21 |  | Написание руководства пользователя | 3w | 2021-06-24 11:37 | 2021-07-15 15:37 | 20SS+2d |  | 4.05d |  |
| 22 | 8 | **Создание web – сайта и поддержка** | 23.62d | 2021-06-24 11:37 | 2021-07-27 17:37 |  |  | 4.05d |  |
| 23 |  | Разработка структуры сайта | 1d | 2021-06-24 11:37 | 2021-06-25 11:37 | 21SS |  | 4.05d |  |
| 24 |  | Разработка дизайна сайта | 1.43w | 2021-06-25 11:37 | 2021-07-06 14:37 | 23 |  | 4.05d |  |
| 25 |  | Наполнение сайта | 3w | 2021-07-06 14:37 | 2021-07-27 17:37 | 24 |  | 4.05d |  |
| 26 |  | Тестирование сайта | 4.2w | 2021-07-20 17:37 | 2021-08-19 10:37 | 22FS-1w |  | 4.05d |  |
| 27 |  | Сдача сайта в эксплуатацию | 0w | 2021-08-19 10:37 | 2021-08-19 10:37 | 26 |  | 4.05d |  |
| 28 | 11 | **Совещание** | 120.88d | 2021-03-03 10:00 A | 2021-08-25 11:00 |  | 38% | 0d |  |
| 29 |  | Совещание 1 | 1h | 2021-03-03 10:00 A | 2021-03-03 11:00 A |  | 100% |  | start no earlier than 2021-03-03 10:00 |
| 30 |  | Совещание 2 | 1h | 2021-03-10 10:00 A | 2021-03-10 11:00 A |  | 100% |  | start no earlier than 2021-03-10 10:00 |
| 31 |  | Совещание 3 | 1h | 2021-03-17 10:00 A | 2021-03-17 11:00 A |  | 100% |  | start no earlier than 2021-03-17 10:00 |
| 32 |  | Совещание 4 | 1h | 2021-03-24 10:00 A | 2021-03-24 11:00 A |  | 100% |  | start no earlier than 2021-03-24 10:00 |
| 33 |  | Совещание 5 | 1h | 2021-03-31 10:00 A | 2021-03-31 11:00 A |  | 100% |  | start no earlier than 2021-03-31 10:00 |
| 34 |  | Совещание 6 | 1h | 2021-04-07 10:00 A | 2021-04-07 11:00 A |  | 100% |  | start no earlier than 2021-04-07 10:00 |
| 35 |  | Совещание 7 | 1h | 2021-04-14 10:00 A | 2021-04-14 11:00 A |  | 100% |  | start no earlier than 2021-04-14 10:00 |
| 36 |  | Совещание 8 | 1h | 2021-04-21 10:00 A | 2021-04-21 11:00 A |  | 100% |  | start no earlier than 2021-04-21 10:00 |
| 37 |  | Совещание 9 | 1h | 2021-04-28 10:00 A | 2021-04-28 11:00 A |  | 100% |  | start no earlier than 2021-04-28 10:00 |
| 38 |  | Совещание 10 | 1h | 2021-05-05 10:00 A | 2021-05-05 11:00 A |  | 100% |  | start no earlier than 2021-05-05 10:00 |
| 39 |  | Совещание 11 | 1h | 2021-05-12 10:00 | 2021-05-12 11:00 |  |  | 73.88d | start no earlier than 2021-05-12 10:00 |
| 40 |  | Совещание 12 | 1h | 2021-05-19 10:00 | 2021-05-19 11:00 |  |  | 68.88d | start no earlier than 2021-05-19 10:00 |
| 41 |  | Совещание 13 | 1h | 2021-05-26 10:00 | 2021-05-26 11:00 |  |  | 63.88d | start no earlier than 2021-05-26 10:00 |
| 42 |  | Совещание 14 | 1h | 2021-06-02 10:00 | 2021-06-02 11:00 |  |  | 58.88d | start no earlier than 2021-06-02 10:00 |
| 43 |  | Совещание 15 | 1h | 2021-06-09 10:00 | 2021-06-09 11:00 |  |  | 53.88d | start no earlier than 2021-06-09 10:00 |
| 44 |  | Совещание 16 | 1h | 2021-06-16 10:00 | 2021-06-16 11:00 |  |  | 50d | start no earlier than 2021-06-16 10:00 |
| 45 |  | Совещание 17 | 1h | 2021-06-23 10:00 | 2021-06-23 11:00 |  |  | 45d | start no earlier than 2021-06-23 10:00 |
| 46 |  | Совещание 18 | 1h | 2021-06-30 10:00 | 2021-06-30 11:00 |  |  | 40d | start no earlier than 2021-06-30 10:00 |
| 47 |  | Совещание 19 | 1h | 2021-07-07 10:00 | 2021-07-07 11:00 |  |  | 35d | start no earlier than 2021-07-07 10:00 |
| 48 |  | Совещание 20 | 1h | 2021-07-14 10:00 | 2021-07-14 11:00 |  |  | 30d | start no earlier than 2021-07-14 10:00 |
| 49 |  | Совещание 21 | 1h | 2021-07-21 10:00 | 2021-07-21 11:00 |  |  | 25d | start no earlier than 2021-07-21 10:00 |
| 50 |  | Совещание 22 | 1h | 2021-07-28 10:00 | 2021-07-28 11:00 |  |  | 20d | start no earlier than 2021-07-28 10:00 |
| 51 |  | Совещание 23 | 1h | 2021-08-04 10:00 | 2021-08-04 11:00 |  |  | 15d | start no earlier than 2021-08-04 10:00 |
| 52 |  | Совещание 24 | 1h | 2021-08-11 10:00 | 2021-08-11 11:00 |  |  | 10d | start no earlier than 2021-08-11 10:00 |
| 53 |  | Совещание 25 | 1h | 2021-08-18 10:00 | 2021-08-18 11:00 |  |  | 5d | start no earlier than 2021-08-18 10:00 |
| 54 |  | Совещание 26 | 1h | 2021-08-25 10:00 | 2021-08-25 11:00 |  |  | 0d | start no earlier than 2021-08-25 10:00 |

## Version 2 (saved 2021-04-02, file lab05_decom.mpp)

Note of the change: lab 1-6

Last finish 2021-08-25 → 2021-07-30 (-26d). Complete tasks 16 → 0.

Added:

| ID | Task | Duration | Start | Finish |
| --- | --- | --- | --- | --- |
| 2 | **Анализ** | 25.62d | 2021-03-01 09:00 | 2021-04-06 15:00 |
| 5 | **Разработка** | 51.38d | 2021-03-01 09:00 | 2021-05-14 14:00 |
| 12 | **Программирование** | 95.2d | 2021-03-16 11:00 | 2021-07-30 15:37 |
| 18 | **Наполнение** | 60d | 2021-04-06 11:00 | 2021-07-02 14:00 |
| 23 | **Тестирование** | 29.75d | 2021-05-06 14:00 | 2021-06-21 12:00 |

Removed: 2 Создание интерфейса; 3 Разработка дизайна интерфейса; 8 Построение базы объектов; 12 Создание ядра GIS; 19 Создание руководства пользователя; 22 Создание web – сайта и поддержка; 51 Совещание 23; 52 Совещание 24; 53 Совещание 25; 54 Совещание 26

Changed:

| ID | Task | Start | Finish | Duration | Complete | Total float | Predecessors | Other |
| --- | --- | --- | --- | --- | --- | --- | --- | --- |
| 1 | Начало проекта | 2021-03-01 09:00 A → 2021-03-01 09:00 | 2021-03-01 09:00 A → 2021-03-01 09:00 |  | 100% → 0% | none → 0d |  |  |
| 3 | Анализ и построение структуры базы объектов | 2021-03-23 13:00 A → 2021-03-01 09:00 (-22d) | 2021-04-06 15:00 A → 2021-03-16 11:00 (-21d) | 2w → 3.23w | 100% → 0% | none → 20.2d | none → 1 | resources системный аналитик → системный аналитик; сервер |
| 4 | Анализ и проектирование ядра | 2021-03-01 09:00 A → 2021-03-01 09:00 | 2021-03-23 12:00 A → 2021-04-06 15:00 (+14d) | 3w → 5w | 100% → 0% | none → 0d | none → 1 |  |
| 6 | Создание модели ядра | 2021-03-23 13:00 A → 2021-04-06 15:00 (+14d) | 2021-05-07 18:00 → 2021-05-14 14:00 (+7d) | 6.45w → 5.15w | 94% → 0% | 4.05d → 0d |  | resources ведущий программист; программист №1; программист №2 → ведущий программист; программист №1 |
| 7 | Разработка 2D графических элементов | 2021-03-01 09:00 A → 2021-03-01 09:00 | 2021-03-24 18:00 A → 2021-03-23 12:00 (-1d) | 3.3w → 3w | 100% → 0% | none → 45.12d | none → 1 |  |
| 8 | Разработка 3D графических элементов | 2021-03-01 09:00 A → 2021-03-01 09:00 | 2021-03-17 12:00 A → 2021-03-16 11:00 (-1d) | 2.2w → 2w | 100% → 0% | none → 45.12d |  |  |
| 9 | Разработка дизайна руководства | 2021-06-22 11:37 → 2021-04-13 15:00 (-70d) | 2021-06-29 13:37 → 2021-04-20 16:00 (-70d) |  |  | 4.05d → 49.08d | none → 14FS-10d |  |
| 10 | Разработка дизайна сайта | 2021-06-25 11:37 → 2021-04-16 15:00 (-70d) | 2021-07-06 14:37 → 2021-04-27 17:00 (-70d) |  |  | 4.05d → 49.08d |  |  |
| 11 | Разработка структуры сайта | 2021-06-24 11:37 → 2021-04-15 15:00 (-70d) | 2021-06-25 11:37 → 2021-04-16 15:00 (-70d) |  |  | 4.05d → 49.08d |  |  |
| 13 | Создание заставки | 2021-03-17 13:00 A → 2021-03-16 11:00 (-1d) | 2021-04-09 11:00 A → 2021-04-06 15:00 (-3d) | 3.3w → 3w | 100% → 0% | none → 45.12d |  |  |
| 14 | Программирование интерфейса | 2021-06-24 16:37 → 2021-04-06 15:00 (-79d) | 2021-07-06 11:37 → 2021-04-27 15:00 (-70d) | 1.5w → 3w |  | 4.05d → 45.12d | Разработка дизайна интерфейса, Создание ядра GIS → 13 | resources программист №3; программист №4; программист №1; программист №2 → программист №3; программист №4 |
| 15 | Программирование средств обработки базы объектов | 2021-04-06 15:00 A → 2021-03-16 11:00 (-21d) | 2021-05-07 18:00 → 2021-04-06 11:00 (-31d) | 4.9w → 5.25w | 93% → 0% | 8.38d → 20.2d |  | resources программист №3; программист №4 → программист №3; программист №4; сервер |
| 16 | Создание рабочей версии ядра | 2021-05-12 11:00 → 2021-05-21 14:00 (+9d) | 2021-06-24 16:37 → 2021-07-30 15:37 (+36d) | 6.09w → 9.82w |  | 4.05d → 0d |  |  |
| 17 | Создание справочной системы | 2021-07-15 15:37 → 2021-05-11 10:00 (-65d) | 2021-07-29 17:37 → 2021-05-25 12:00 (-65d) |  |  | 18.3d → 47.2d |  | constraint none → start no earlier than 2021-04-28 09:00 |
| 19 | Наполнение базы объектов | 2021-05-07 18:00 → 2021-04-06 11:00 (-31d) | 2021-08-12 17:00 → 2021-07-02 14:00 (-41d) | 15w → 21.2w |  | 8.38d → 20.2d |  | resources наборщик данных №2; наборщик данных №3; наборщик данных №4; наборщик данных №5 → наборщик данных №1; наборщик данных №2; наборщик данных №3; наборщик данных №4; наборщик данных №5; сервер |
| 20 | Создание мультимедиа – наполнения | 2021-04-09 11:00 A → 2021-04-06 15:00 (-3d) | 2021-05-26 10:00 → 2021-05-21 15:00 (-5d) |  | 57% → 0% | 64d → 48.95d | Разработка дизайна интерфейса → 13 |  |
| 21 | Наполнение сайта | 2021-07-06 14:37 → 2021-04-27 17:00 (-70d) | 2021-07-27 17:37 → 2021-05-21 14:00 (-67d) |  |  | 4.05d → 49.08d |  |  |
| 22 | Написание руководства пользователя | 2021-06-24 11:37 → 2021-04-15 15:00 (-70d) | 2021-07-15 15:37 → 2021-05-11 10:00 (-65d) |  |  | 4.05d → 49.08d |  |  |
| 24 | Тестирование модели ядра | 2021-05-11 09:00 → 2021-05-14 14:00 (+3d) | 2021-05-12 11:00 → 2021-05-21 14:00 (+9d) | 0.25w → 1w |  | 4.05d → 0d |  | constraint start no earlier than 2021-05-11 09:00 → none; resources программист №1; программист №2; программист №3; программист №4 → программист №1 |
| 25 | Тестирование сайта | 2021-07-20 17:37 → 2021-05-06 14:00 (-75d) | 2021-08-19 10:37 → 2021-06-21 12:00 (-59d) | 4.2w → 5.95w |  | 4.05d → 29.33d | Создание web – сайта и поддержкаFS-1w → 6FS-1w |  |
| 26 | Сдача сайта в эксплуатацию | 2021-08-19 10:37 → 2021-06-21 12:00 (-59d) | 2021-08-19 10:37 → 2021-06-21 12:00 (-59d) |  |  | 4.05d → 29.33d |  |  |
| 27 | **Совещание** | 2021-03-03 10:00 A → 2021-03-03 10:00 | 2021-08-25 11:00 → 2021-07-28 11:00 (-28d) | 120.88d → 100.88d | 38% → 0% | 0d → 2.45d |  |  |
| 28 | Совещание 1 | 2021-03-03 10:00 A → 2021-03-03 10:00 | 2021-03-03 11:00 A → 2021-03-03 11:00 |  | 100% → 0% | none → 103.2d |  |  |
| 29 | Совещание 2 | 2021-03-10 10:00 A → 2021-03-10 10:00 | 2021-03-10 11:00 A → 2021-03-10 11:00 |  | 100% → 0% | none → 99.2d |  |  |
| 30 | Совещание 3 | 2021-03-17 10:00 A → 2021-03-17 10:00 | 2021-03-17 11:00 A → 2021-03-17 11:00 |  | 100% → 0% | none → 94.2d |  |  |
| 31 | Совещание 4 | 2021-03-24 10:00 A → 2021-03-24 10:00 | 2021-03-24 11:00 A → 2021-03-24 11:00 |  | 100% → 0% | none → 89.2d |  |  |
| 32 | Совещание 5 | 2021-03-31 10:00 A → 2021-03-31 10:00 | 2021-03-31 11:00 A → 2021-03-31 11:00 |  | 100% → 0% | none → 84.2d |  |  |
| 33 | Совещание 6 | 2021-04-07 10:00 A → 2021-04-07 10:00 | 2021-04-07 11:00 A → 2021-04-07 11:00 |  | 100% → 0% | none → 79.2d |  |  |
| 34 | Совещание 7 | 2021-04-14 10:00 A → 2021-04-14 10:00 | 2021-04-14 11:00 A → 2021-04-14 11:00 |  | 100% → 0% | none → 74.2d |  |  |
| 35 | Совещание 8 | 2021-04-21 10:00 A → 2021-04-21 10:00 | 2021-04-21 11:00 A → 2021-04-21 11:00 |  | 100% → 0% | none → 69.2d |  |  |
| 36 | Совещание 9 | 2021-04-28 10:00 A → 2021-04-28 10:00 | 2021-04-28 11:00 A → 2021-04-28 11:00 |  | 100% → 0% | none → 64.2d |  |  |
| 37 | Совещание 10 | 2021-05-05 10:00 A → 2021-05-05 10:00 | 2021-05-05 11:00 A → 2021-05-05 11:00 |  | 100% → 0% | none → 60.33d |  |  |
| 44 | Совещание 17 |  |  |  |  | 45d → 27.45d |  | resources 3D аниматор; web-дизайнер; ведущий программист; мультимедиа-корреспондент; системный аналитик; технический писатель; художник-дизайнер → none; baseline start 2021-06-23 10:00 → none; baseline finish 2021-06-23 11:00 → none |
| 45 | Совещание 18 |  |  |  |  | 40d → 22.45d |  | resources 3D аниматор; web-дизайнер; ведущий программист; мультимедиа-корреспондент; системный аналитик; технический писатель; художник-дизайнер → none; baseline start 2021-06-30 10:00 → none; baseline finish 2021-06-30 11:00 → none |
| 46 | Совещание 19 |  |  |  |  | 35d → 17.45d |  | resources 3D аниматор; web-дизайнер; ведущий программист; мультимедиа-корреспондент; системный аналитик; технический писатель; художник-дизайнер → none; baseline start 2021-07-07 10:00 → none; baseline finish 2021-07-07 11:00 → none |
| 47 | Совещание 20 |  |  |  |  | 30d → 12.45d |  | resources 3D аниматор; web-дизайнер; ведущий программист; мультимедиа-корреспондент; системный аналитик; технический писатель; художник-дизайнер → none; baseline start 2021-07-14 10:00 → none; baseline finish 2021-07-14 11:00 → none |
| 48 | Совещание 21 |  |  |  |  | 25d → 7.45d |  | resources 3D аниматор; web-дизайнер; ведущий программист; мультимедиа-корреспондент; системный аналитик; технический писатель; художник-дизайнер → none; baseline start 2021-07-21 10:00 → none; baseline finish 2021-07-21 11:00 → none |
| 49 | Совещание 22 |  |  |  |  | 20d → 2.45d |  | resources 3D аниматор; web-дизайнер; ведущий программист; мультимедиа-корреспондент; системный аналитик; технический писатель; художник-дизайнер → none; baseline start 2021-07-28 10:00 → none; baseline finish 2021-07-28 11:00 → none |
